# CRM Online

Schedule from MS Project, 2012-09-01 to 2012-10-29, A marks actual dates.
.

## Calendars

- Padrão: Mon-Fri 08:00-12:00, 13:00-17:00; Sat 08:00-13:00; Sun off.

## Resources

| Resource |
| --- |
| Israel |
| Rômulo |
| Túlio |
| Wander |

## Schedule

| ID | WBS | Task | Duration | Start | Finish | Predecessors | Complete | Remaining | Baseline start | Baseline finish | Baseline duration | Total slack | Free slack | Constraint | Deadline | Resources | Work | Actual work |
| --- | --- | --- | --- | --- | --- | --- | --- | --- | --- | --- | --- | --- | --- | --- | --- | --- | --- | --- |
| 1 | 1 | **Entrega 03** | 21.12d | 2012-09-01 A | 2012-09-27 |  | 44% | 11.84d | 2012-09-01 | 2012-09-14 | 10.38d | -4.25d | 0d |  | 2012-09-22 |  | 182h | 80h |
| 2 | 1.1 | **Especificação** | 16.5d | 2012-09-07 A | 2012-09-27 |  | 17% | 13.69d | 2012-09-04 | 2012-09-11 | 6.25d | -4.25d | 0d |  | 2012-09-22 |  | 94h | 16h |
| 3 | 1.1.1 | Introdução | 2.5d | 2012-09-20 | 2012-09-22 |  |  |  | 2012-09-04 | 2012-09-06 | 2.5d | -3.62d | 0d | start no earlier than 2012-09-19 | 2012-09-22 | Túlio | 20h |  |
| 4 | 1.1.2 | Descrição Geral | 2.5d | 2012-09-07 A | 2012-09-20 |  | 80% | 0.5d | 2012-09-04 | 2012-09-06 | 2.5d | -4d | 0d | start no earlier than 2012-09-06 | 2012-09-22 | Wander | 20h | 16h |
| 5 | 1.1.3 | **Requisitos Específicos** | 6.25d | 2012-09-20 | 2012-09-27 |  |  |  | 2012-09-04 | 2012-09-11 | 6.25d | -4.25d | 0d |  | 2012-09-22 |  | 54h |  |
| 6 | 1.1.3.1 | Requisitos Funcionais | 3d | 2012-09-20 | 2012-09-24 |  |  |  | 2012-09-04 | 2012-09-07 | 3.75d | -0.38d | 0d | start no earlier than 2012-09-19 | 2012-09-22 | Israel | 24h |  |
| 7 | 1.1.3.2 | Requisitos Não Funcionais | 3.75d | 2012-09-22 | 2012-09-27 | 3 |  |  | 2012-09-06 | 2012-09-11 | 3.75d | -3.62d | 0d | start no earlier than 2012-09-12 | 2012-09-22 | Túlio | 30h |  |
| 8 | 1.2 | **Diagramas** | 18.38d | 2012-09-01 A | 2012-09-24 |  | 73% | 5.01d | 2012-09-01 | 2012-09-14 | 10.38d | -2.5d | 0d |  | 2012-09-22 |  | 88h | 64h |
| 9 | 1.2.1 | Casos de Uso | 2d | 2012-09-01 A | 2012-09-04 A |  | 100% |  | 2012-09-01 | 2012-09-04 | 2.5d |  |  | start no earlier than 2012-09-01 | 2012-09-22 | Rômulo | 16h | 16h |
| 10 | 1.2.2 | **Sequência** | 1d | 2012-09-20 | 2012-09-21 |  |  |  | 2012-09-06 | 2012-09-10 | 2.5d | -4d | 0d |  | 2012-09-22 |  | 8h |  |
| 11 | 1.2.2.1 | Gerenciar Permissões de Usuários | 1d | 2012-09-20 | 2012-09-21 | 4 |  |  | 2012-09-06 | 2012-09-10 | 2.5d | -5.25d | 0d | start no earlier than 2012-09-19 | 2012-09-22 | Wander | 8h |  |
| 12 | 1.2.3 | Atividades (incl. Atores) | 2d | 2012-09-21 | 2012-09-24 | 11 |  |  | 2012-09-10 | 2012-09-12 | 2.5d | -5.25d | 0d | start no earlier than 2012-09-18 | 2012-09-22 | Wander | 16h |  |
| 13 | 1.2.4 | Classes de Domínio | 2d | 2012-09-04 A | 2012-09-06 A | 9 | 100% |  | 2012-09-04 | 2012-09-07 | 2.5d |  |  | start no earlier than 2012-09-01 | 2012-09-22 | Rômulo | 16h | 16h |
| 14 | 1.2.5 | Implantação | 2d | 2012-09-19 A | 2012-09-20 A | 13 | 100% |  | 2012-09-11 | 2012-09-14 | 2.5d |  |  | start no earlier than 2012-09-15 | 2012-09-22 | Rômulo | 16h | 16h |
| 15 | 1.2.6 | Banco de Dados | 2d | 2012-09-10 A | 2012-09-11 A |  | 100% |  | 2012-09-11 | 2012-09-14 | 2.5d |  |  | start no earlier than 2012-09-10 | 2012-09-22 | Rômulo | 16h | 16h |
| 16 | 2 | **Entrega 04** | 20.38d | 2012-09-12 A | 2012-10-06 |  | 8% | 18.76d | 2012-09-12 | 2012-09-28 | 12.5d | -5.5d | 0d |  | 2012-09-29 |  | 252h | 20h |
| 17 | 2.1 | **Código Fonte** | 17.88d | 2012-09-12 A | 2012-10-03 |  | 11% | 15.99d | 2012-09-12 | 2012-09-26 | 11.25d | -3.25d | 0d |  | 2012-09-29 |  | 190h | 20h |
| 18 | 2.1.1 | Gerenciar Clientes | 5d | 2012-09-12 A | 2012-09-24 | 15 | 50% | 2.5d | 2012-09-12 | 2012-09-20 | 6.25d | 1.38d | 0d |  | 2012-09-29 | Rômulo | 40h | 20h |
| 19 | 2.1.2 | Gerenciar Permissões de Usuários | 3.75d | 2012-09-24 | 2012-09-27 | 18 |  |  | 2012-09-21 | 2012-09-26 | 3.75d | 1.38d | 0d | start no earlier than 2012-09-19 | 2012-09-29 | Rômulo | 30h |  |
| 20 | 2.1.3 | Gerenciar Usuários | 5d | 2012-09-24 | 2012-10-01 | 12 |  |  | 2012-09-14 | 2012-09-21 | 6.25d | -4d | 0d | start no earlier than 2012-09-18 | 2012-09-29 | Wander | 40h |  |
| 21 | 2.1.4 | Gerenciar Empresa | 5d | 2012-09-27 | 2012-10-03 | 7 |  |  | 2012-09-14 | 2012-09-21 | 6.25d | -5.5d | 0d |  | 2012-09-29 | Túlio | 40h |  |
| 22 | 2.1.5 | Gerenciar Atividades | 5d | 2012-09-24 | 2012-09-29 | 6 |  |  | 2012-09-14 | 2012-09-21 | 6.25d | -1d | 0d | start no earlier than 2012-09-15 | 2012-09-29 | Israel | 40h |  |
| 23 | 2.2 | Manual | 1.25d | 2012-09-29 | 2012-10-01 | 22 |  |  | 2012-09-21 | 2012-09-25 | 2.5d | -1d | 0d |  | 2012-09-29 | Israel | 10h |  |
| 24 | 2.3 | Store Procedure | 2.5d | 2012-10-04 | 2012-10-06 | 21 |  |  | 2012-09-21 | 2012-09-25 | 2.5d | -5.5d | 0d |  | 2012-09-29 | Túlio | 20h |  |
| 25 | 2.4 | Script Banco de Dados | 0.25d | 2012-09-28 | 2012-09-28 | 19 |  |  | 2012-09-26 | 2012-09-28 | 1.25d | 1.38d |  | start no earlier than 2012-09-19 | 2012-09-29 | Rômulo | 2h |  |
| 26 | 2.5 | Diagrama de Classes do Sistema | 3.75d | 2012-10-01 | 2012-10-04 | 20 |  |  | 2012-09-20 | 2012-09-25 | 3.75d | -4d | 0d |  | 2012-09-29 | Wander | 30h |  |

| ID | WBS | Task | Duration | Start | Finish | Predecessors | Baseline start | Baseline finish | Baseline duration | Total slack | Free slack | Deadline | Resources | Work |
| --- | --- | --- | --- | --- | --- | --- | --- | --- | --- | --- | --- | --- | --- | --- |
| 27 | 3 | **Entrega 06** | 12.5d | 2012-10-05 | 2012-10-20 |  | 2012-09-28 | 2012-10-23 | 20d | 0.38d |  | 2012-11-04 |  | 320h |
| 28 | 3.1 | Aplicativo Android | 12.5d | 2012-10-05 | 2012-10-20 | 25, 26 | 2012-09-28 | 2012-10-13 | 12.5d | 0.38d | 0d | 2012-10-21 | Rômulo; Wander | 200h |
| 29 | 3.2 | Testes de Software | 5d | 2012-10-06 | 2012-10-12 | 23, 24 | 2012-10-13 | 2012-10-19 | 5d | 12d | 0d | 2012-10-28 | Israel; Túlio | 80h |
| 30 | 3.3 | Avaliação de Interfaces | 2.5d | 2012-10-12 | 2012-10-16 | 29 | 2012-10-19 | 2012-10-23 | 2.5d | 15.12d | 0d | 2012-11-04 | Israel; Túlio | 40h |
| 31 | 4 | **Entrega 05** | 10.5d | 2012-10-16 | 2012-10-29 |  | 2012-10-23 | 2012-11-13 | 17d | 16.88d |  | 2012-11-19 |  | 136h |
| 32 | 4.1 | Casos de Uso no GitHub | 5d | 2012-10-16 | 2012-10-23 | 30 | 2012-10-23 | 2012-10-29 | 5d | 22.38d |  | 2012-11-19 | Israel | 40h |
| 33 | 4.2 | Classes de Teste | 5d | 2012-10-16 | 2012-10-23 | 30 | 2012-10-30 | 2012-11-05 | 5d | 22.38d |  | 2012-11-19 | Túlio | 40h |
| 34 | 4.3 | Documentação dos Ciclos de TDD | 5d | 2012-10-20 | 2012-10-26 | 28 | 2012-11-05 | 2012-11-10 | 5d | 16.88d | 0d | 2012-11-19 | Wander | 40h |
| 35 | 4.4 | Prontificação do GitHub Atualizado | 2d | 2012-10-26 | 2012-10-29 | 34 | 2012-11-10 | 2012-11-13 | 2d | 16.88d |  | 2012-11-19 | Rômulo | 16h |
